# nibKame

Schedule from GanttProject, 2010-10-14 to 2011-01-14.
GuNCT

## Calendars

- Project calendar: Mon-Fri working; Sat-Sun off.

## Resources

| Resource |
| --- |
| ikk775 |
| na4zagin3 |

## Schedule

| ID | Task | Duration | Start | Finish | Resources |
| --- | --- | --- | --- | --- | --- |
| 1 | 型推論部の作成 | 10d | 2010-10-14 | 2010-10-27 | ikk775 |
| 2 | 中間言語への変換部の作成 | 5d | 2010-10-14 | 2010-10-20 | na4zagin3 |
| 3 | 正規化部の作成 | 10d | 2010-10-21 | 2010-11-03 | na4zagin3 |
| 4 | 最適化部の作成 | 10d | 2010-11-04 | 2010-11-17 | na4zagin3 |
| 5 | 仮想機械語への変換部の作成 | 5d | 2010-11-18 | 2010-11-24 | na4zagin3 |
| 6 | 仮想機械語最適化部の作成 | 5d | 2010-11-18 | 2010-11-24 | ikk775 |
| 7 | 基本仕様のデバッグ | 10d | 2010-11-25 | 2010-12-08 | na4zagin3; ikk775 |
| 8 | 標準ライブラリの作成 | 13d | 2010-11-01 | 2010-11-17 | na4zagin3; ikk775 |
| 9 | FFIの作成 | 10d | 2010-11-25 | 2010-12-08 | ikk775 |
| 10 | 構文木変換部の作成 | 5d | 2010-12-09 | 2010-12-15 | na4zagin3 |
| 11 | 字句・構文解析部の作成 | 5d | 2010-12-09 | 2010-12-15 | ikk775 |
| 12 | GCの作成 | 22d | 2010-12-16 | 2011-01-14 | na4zagin3; ikk775 |
| 13 | 全体的なデバッグ | 22d | 2010-12-16 | 2011-01-14 | na4zagin3; ikk775 |
